# C2300_프로젝트일정(WBS)_20160610_v.0.1

How a schedule from MS Project changed from version to version. A marks actual dates.

## Version 1 (data date 2016-06-24, saved 2016-06-24, file C2300_프로젝트일정(WBS)_20160624_v0.2.mpp)

Note of the change: study 스프링 시큐리티 각 시점별 보안

| ID | WBS | Task | Duration | Start | Finish | Complete | Total float | Constraint |
| --- | --- | --- | --- | --- | --- | --- | --- | --- |
| 1 | 1 | **창고관리시스템(WMS) 구축** | 131d | 2016-06-10 A | 2016-12-16 | 4% | 10d |  |
| 2 | 1.1 | **1. 준비단계** | 16d | 2016-06-10 A | 2016-07-01 | 63% | 125d |  |
| 3 | 1.1.1 | **1.1 프로젝트 착수** | 12d | 2016-06-16 A | 2016-07-01 | 29% | 125d |  |
| 4 |  | 1.1.1 프로젝트 조직 구성 | 5d | 2016-06-27 | 2016-07-01 |  | 125d | start no earlier than 2016-06-27 |
| 5 |  | 1.1.2 개발 산출물 목록 작성 | 1d | 2016-06-16 A | 2016-06-16 A | 100% |  | start no earlier than 2016-06-27 |
| 6 |  | 1.1.3 산출물 표준 Template 작성 | 1d | 2016-06-16 A | 2016-06-16 A | 100% |  | start no earlier than 2016-06-27 |
| 7 | 1.1.2 | **1.2 프로젝트 계획수립** | 15d | 2016-06-10 A | 2016-06-30 | 89% | 126d |  |
| 8 |  | 1.2.1 WBS & Schedule 작성(상세화) | 4d | 2016-06-10 A | 2016-06-15 A | 100% |  | start no earlier than 2016-06-29 |
| 9 |  | 1.2.2 프로젝트 계획서 작성 | 4d | 2016-06-10 A | 2016-06-15 A | 100% |  | start no earlier than 2016-06-29 |
| 10 |  | 1.2.3 kick off 미팅 | 1d | 2016-06-30 | 2016-06-30 |  | 126d | start no earlier than 2016-06-30 |
| 11 | 1.2 | **2. 분석단계** | 11d | 2016-07-01 | 2016-07-15 |  | 115d |  |
| 12 | 1.2.1 | **2.1 AS-IS 분석** | 6d | 2016-07-01 | 2016-07-08 |  | 120d |  |
| 13 |  | 2.1.1 업무 파악 | 3d | 2016-07-01 | 2016-07-05 |  | 123d | start no earlier than 2016-07-01 |
| 14 |  | 2.1.2 업무 분석(사례분석) | 3d | 2016-07-06 | 2016-07-08 |  | 120d | start no earlier than 2016-07-06 |
| 15 | 1.2.2 | **2.2 요건 정의** | 5d | 2016-07-11 | 2016-07-15 |  | 115d |  |
| 16 |  | 2.2.1 솔루션 Needs 분석 | 1d | 2016-07-11 | 2016-07-11 |  | 119d | start no earlier than 2016-07-11 |
| 17 |  | 2.2.2 요구사항 정의서 작성 | 3d | 2016-07-12 | 2016-07-14 |  | 116d | start no earlier than 2016-07-12 |
| 18 |  | 2.2.3 요구사항 정의 Review | 1d | 2016-07-15 | 2016-07-15 |  | 115d | start no earlier than 2016-07-15 |
| 19 |  | 2.3 검토 | 1d | 2016-07-15 | 2016-07-15 |  | 115d | start no earlier than 2016-07-15 |
| 20 | 1.3 | **3. 설계단계** | 64d | 2016-06-16 A | 2016-09-19 | 6% | 73d |  |
| 21 | 1.3.1 | **3.1 To-Be 모델링** | 5d | 2016-06-16 A | 2016-06-22 A | 100% |  |  |
| 22 |  | 3.1.1 전체 프로세스 정의 | 1d | 2016-06-22 A | 2016-06-22 A | 100% |  | start no earlier than 2016-07-18 |
| 23 |  | 3.1.2 단위 프로세스 정의 | 5d | 2016-06-16 A | 2016-06-22 A | 100% |  | start no earlier than 2016-07-19 |
| 24 | 1.3.2 | **3.2 화면설계** | 25d | 2016-07-21 | 2016-08-25 |  | 87d |  |
| 25 |  | 3.2.1 프로그램 목록 정의 | 2d | 2016-07-21 | 2016-07-22 |  | 110d | start no earlier than 2016-07-21 |
| 26 |  | 3.2.2 화면 UI 설계 | 5d | 2016-07-25 | 2016-07-29 |  | 105d | start no earlier than 2016-07-25 |
| 27 |  | 3.2.3 프로그램 설계 | 14d | 2016-08-01 | 2016-08-19 |  | 91d | start no earlier than 2016-08-01 |
| 28 |  | 3.2.4 Stored Procedure 목록 정의 | 4d | 2016-08-22 | 2016-08-25 |  | 87d | start no earlier than 2016-08-22 |
| 29 | 1.3.3 | **3.3 테이블설계** | 5d | 2016-08-01 | 2016-08-05 |  | 100d |  |
| 30 |  | 3.3.1 테이블 목록 정의 | 1d | 2016-08-01 | 2016-08-01 |  | 104d | start no earlier than 2016-08-01 |
| 31 |  | 3.3.2 테이블 설계 | 4d | 2016-08-02 | 2016-08-05 |  | 100d | start no earlier than 2016-08-02 |
| 32 | 1.3.4 | **3.4 Framework 설계** | 37d | 2016-07-11 | 2016-08-31 |  | 83d |  |
| 33 |  | 3.4.1 Framework 구성 | 3d | 2016-07-11 | 2016-07-13 |  | 117d | start no earlier than 2016-07-11 |
| 34 |  | 3.4.2 공통 Function 설계 | 5d | 2016-07-14 | 2016-07-20 |  | 112d | start no earlier than 2016-07-14 |
| 35 |  | 3.4.3 Framework 개발 | 29d | 2016-07-21 | 2016-08-31 |  | 83d | finish no earlier than 2016-08-31 |
| 36 |  | 3.4.3 디자인 시안 | 4d | 2016-08-16 | 2016-08-19 |  | 91d | start no earlier than 2016-08-15 |
| 37 |  | 3.5 PDA 설계 | 10d | 2016-09-01 | 2016-09-19 |  | 73d | start no earlier than 2016-09-01 |
| 38 |  | 3.6 인터페이스 설계 | 10d | 2016-09-01 | 2016-09-19 |  | 73d | start no earlier than 2016-09-01 |
| 39 |  | 3.7 설계 검토 및 확정 | 2d | 2016-08-29 | 2016-08-30 |  | 84d | start no earlier than 2016-08-29 |
| 40 |  | 3.8 중간 설계보고 | 1d | 2016-08-31 | 2016-08-31 |  | 83d | start no earlier than 2016-08-31 |
| 41 | 1.4 | **4. 구현단계** | 61d | 2016-09-01 | 2016-11-30 |  | 22d |  |
| 42 |  | 4.1 개발 일정 계획 | 2d | 2016-09-01 | 2016-09-02 |  | 81d | start no earlier than 2016-09-01 |
| 43 | 1.4.2 | **4.2 프로그램 개발** | 48d | 2016-09-01 | 2016-11-11 |  | 35d |  |
| 44 |  | 4.2.1 마스터관리 | 14d | 2016-09-01 | 2016-09-23 |  | 69d | start no earlier than 2016-09-01 |
| 45 |  | 4.2.2 입고관리 | 19d | 2016-09-19 | 2016-10-14 |  | 55d | start no earlier than 2016-09-19 |
| 46 |  | 4.2.3 출고관리 | 34d | 2016-09-26 | 2016-11-11 |  | 35d | start no earlier than 2016-09-26 |
| 47 |  | 4.2.4 재고관리 | 20d | 2016-10-17 | 2016-11-11 |  | 35d | start no earlier than 2016-10-17 |
| 48 |  | 4.2.5 PDA | 39d | 2016-09-19 | 2016-11-11 |  | 35d | start no earlier than 2016-09-19 |
| 49 |  | 4.2.6 인터페이스 | 39d | 2016-09-19 | 2016-11-11 |  | 35d | start no earlier than 2016-09-19 |
| 50 | 1.4.3 | **4.3 매뉴얼 작성** | 8d | 2016-11-21 | 2016-11-30 |  | 22d |  |
| 51 |  | 4.3.1 사용자 매뉴얼 작성 | 5d | 2016-11-21 | 2016-11-25 |  | 25d | start no earlier than 2016-11-21 |
| 52 |  | 4.3.2 운영자 매뉴얼 작성 | 3d | 2016-11-28 | 2016-11-30 |  | 22d | start no earlier than 2016-11-28 |
| 53 | 1.5 | **5. 테스트단계** | 52d | 2016-09-19 | 2016-11-30 |  | 22d |  |
| 54 |  | 5.1 단위 테스트 | 39d | 2016-09-19 | 2016-11-11 |  | 35d | start no earlier than 2016-09-19 |
| 55 | 1.5.2 | **5.2 통합 테스트** | 19d | 2016-11-01 | 2016-11-25 |  | 25d |  |
| 56 |  | 5.2.1 통합테스트 시나리오 작성 | 9d | 2016-11-01 | 2016-11-11 |  | 35d | finish no earlier than 2016-11-11 |
| 57 |  | 5.2.2 통합테스트 실시 | 10d | 2016-11-14 | 2016-11-25 |  | 25d | start no earlier than 2016-11-14 |
| 58 |  | 5.2.3 통합테스트 결과서 작성 | 10d | 2016-11-14 | 2016-11-25 |  | 25d | finish no earlier than 2016-11-25 |
| 59 |  | 5.3 운영자 및 사용자 교육 | 3d | 2016-11-28 | 2016-11-30 |  | 22d | start no earlier than 2016-11-28 |
| 60 |  | 5.4 시스템 적용 계획 수립 | 3d | 2016-11-28 | 2016-11-30 |  | 22d | start no earlier than 2016-11-28 |
| 61 |  | 5.5 테스트 결과 검토 및 확정 | 3d | 2016-11-28 | 2016-11-30 |  | 22d | start no earlier than 2016-11-28 |
| 62 | 1.6 | **6. 운영단계** | 12d | 2016-12-01 | 2016-12-16 |  | 10d |  |
| 63 |  | 6.1 시스템 오픈 | 2d | 2016-12-01 | 2016-12-02 |  | 20d | start no earlier than 2016-12-01 |
| 64 |  | 6.2 시스템 안정화 | 12d | 2016-12-01 | 2016-12-16 |  | 10d | start no earlier than 2016-12-01 |
| 65 |  | 6.3 산출물 인도 | 1d | 2016-12-16 | 2016-12-16 |  | 10d | start no earlier than 2016-12-16 |
| 66 |  | 6.4 최종 완료보고 | 1d | 2016-12-16 | 2016-12-16 |  | 10d | start no earlier than 2016-12-16 |

## Version 2 (data date 2016-11-04, saved 2016-11-04, file C2300_프로젝트일정(WBS)_20161104_v0.6.mpp)

Note of the change: study 스프링 시큐리티 각 시점별 보안

Last finish 2016-12-16 → 2017-03-16 (+90d). Complete tasks 6 → 16.

Removed: 32 3.4 Framework 설계; 33 3.4.1 Framework 구성; 34 3.4.2 공통 Function 설계; 35 3.4.3 Framework 개발; 36 3.4.3 디자인 시안

Changed:

| ID | Task | Start | Finish | Duration | Complete | Total float | Other |
| --- | --- | --- | --- | --- | --- | --- | --- |
| 1 | **창고관리시스템(WMS) 구축** | 2016-06-10 A → 2016-09-26 A (+108d) | 2016-12-16 → 2017-03-16 (+90d) | 131d → 119d | 4% → 9% | 10d → 0d | baseline start 2016-06-27 → 2016-09-26; baseline finish 2016-12-16 → 2017-03-16 |
| 2 | **1. 준비단계** | 2016-06-10 A → 2016-09-26 A (+108d) | 2016-07-01 → 2016-10-07 A (+98d) | 16d → 9d | 63% → 100% | 125d → none | baseline start 2016-06-27 → 2016-09-26; baseline finish 2016-07-01 → 2016-10-07 |
| 3 | **1.1 프로젝트 착수** | 2016-06-16 A → 2016-09-26 A (+102d) | 2016-07-01 → 2016-09-30 A (+91d) | 12d → 5d | 29% → 100% | 125d → none | baseline start 2016-06-27 → 2016-09-26; baseline finish 2016-07-01 → 2016-09-30 |
| 4 | 1.1.1 프로젝트 조직 구성 | 2016-06-27 → 2016-09-26 A (+91d) | 2016-07-01 → 2016-09-26 A (+87d) | 5d → 1d | 0% → 100% | 125d → none | constraint start no earlier than 2016-06-27 → finish no earlier than 2016-09-26; baseline start 2016-06-27 → 2016-09-26; baseline finish 2016-07-01 → 2016-09-26 |
| 5 | 1.1.2 개발 산출물 목록 작성 | 2016-06-16 A → 2016-09-27 A (+103d) | 2016-06-16 A → 2016-09-28 A (+104d) | 1d → 2d |  |  | constraint start no earlier than 2016-06-27 → finish no earlier than 2016-09-28; baseline start 2016-06-27 → 2016-09-27; baseline finish 2016-06-27 → 2016-09-28 |
| 6 | 1.1.3 산출물 표준 Template 작성 | 2016-06-16 A → 2016-09-26 A (+102d) | 2016-06-16 A → 2016-09-30 A (+106d) | 1d → 5d |  |  | constraint start no earlier than 2016-06-27 → finish no earlier than 2016-09-30; baseline start 2016-06-27 → 2016-09-26; baseline finish 2016-06-27 → 2016-09-30 |
| 7 | **1.2 프로젝트 계획수립** | 2016-06-10 A → 2016-10-04 A (+116d) | 2016-06-30 → 2016-10-07 A (+99d) | 15d → 4d | 89% → 100% | 126d → none | baseline start 2016-06-29 → 2016-10-04; baseline finish 2016-06-30 → 2016-10-07 |
| 8 | 1.2.1 WBS & Schedule 작성(상세화) | 2016-06-10 A → 2016-10-04 A (+116d) | 2016-06-15 A → 2016-10-04 A (+111d) | 4d → 1d |  |  | constraint start no earlier than 2016-06-29 → finish no earlier than 2016-10-04; baseline start 2016-06-29 → 2016-10-04; baseline finish 2016-06-30 → 2016-10-04 |
| 9 | 1.2.2 프로젝트 계획서 작성 | 2016-06-10 A → 2016-10-05 A (+117d) | 2016-06-15 A → 2016-10-06 A (+113d) | 4d → 2d |  |  | constraint start no earlier than 2016-06-29 → finish no earlier than 2016-10-06; baseline start 2016-06-29 → 2016-10-05; baseline finish 2016-06-30 → 2016-10-06 |
| 10 | 1.2.3 kick off 미팅 | 2016-06-30 → 2016-10-07 A (+99d) | 2016-06-30 → 2016-10-07 A (+99d) |  | 0% → 100% | 126d → none | constraint start no earlier than 2016-06-30 → finish no earlier than 2016-10-07; baseline start 2016-06-30 → 2016-10-10; baseline finish 2016-06-30 → 2016-10-10 |
| 11 | **2. 분석단계** | 2016-07-01 → 2016-10-10 A (+101d) | 2016-07-15 → 2016-10-21 A (+98d) | 11d → 10d | 0% → 100% | 115d → none | baseline start 2016-07-01 → 2016-10-10; baseline finish 2016-07-15 → 2016-10-21 |
| 12 | **2.1 AS-IS 분석** | 2016-07-01 → 2016-10-10 A (+101d) | 2016-07-08 → 2016-10-14 A (+98d) | 6d → 5d | 0% → 100% | 120d → none | baseline start 2016-07-01 → 2016-10-10; baseline finish 2016-07-08 → 2016-10-14 |
| 13 | 2.1.1 업무 파악 | 2016-07-01 → 2016-10-10 A (+101d) | 2016-07-05 → 2016-10-12 A (+99d) |  | 0% → 100% | 123d → none | constraint start no earlier than 2016-07-01 → finish no earlier than 2016-10-12; baseline start 2016-07-01 → 2016-10-11; baseline finish 2016-07-05 → 2016-10-13 |
| 14 | 2.1.2 업무 분석(사례분석) | 2016-07-06 → 2016-10-13 A (+99d) | 2016-07-08 → 2016-10-14 A (+98d) | 3d → 2d | 0% → 100% | 120d → none | constraint start no earlier than 2016-07-06 → start no earlier than 2016-10-13; baseline start 2016-07-06 → 2016-10-14; baseline finish 2016-07-08 → 2016-10-17 |
| 15 | **2.2 요건 정의** | 2016-07-11 → 2016-10-17 A (+98d) | 2016-07-15 → 2016-10-20 A (+97d) | 5d → 4d | 0% → 100% | 115d → none | baseline start 2016-07-11 → 2016-10-17; baseline finish 2016-07-15 → 2016-10-20 |
| 16 | 2.2.1 솔루션 Needs 분석 | 2016-07-11 → 2016-10-17 A (+98d) | 2016-07-11 → 2016-10-17 A (+98d) |  | 0% → 100% | 119d → none | constraint start no earlier than 2016-07-11 → start no earlier than 2016-10-17; baseline start 2016-07-11 → 2016-10-17; baseline finish 2016-07-11 → 2016-10-17 |
| 17 | 2.2.2 요구사항 정의서 작성 | 2016-07-12 → 2016-10-18 A (+98d) | 2016-07-14 → 2016-10-19 A (+97d) | 3d → 2d | 0% → 100% | 116d → none | constraint start no earlier than 2016-07-12 → start no earlier than 2016-10-18; baseline start 2016-07-12 → 2016-10-18; baseline finish 2016-07-14 → 2016-10-19 |
| 18 | 2.2.3 요구사항 정의 Review | 2016-07-15 → 2016-10-20 A (+97d) | 2016-07-15 → 2016-10-20 A (+97d) |  | 0% → 100% | 115d → none | constraint start no earlier than 2016-07-15 → finish no earlier than 2016-10-20; baseline start 2016-07-15 → 2016-10-20; baseline finish 2016-07-15 → 2016-10-20 |
| 19 | 2.3 검토 | 2016-07-15 → 2016-10-21 A (+98d) | 2016-07-15 → 2016-10-21 A (+98d) |  | 0% → 100% | 115d → none | constraint start no earlier than 2016-07-15 → start no earlier than 2016-10-21; baseline start 2016-07-15 → 2016-10-21; baseline finish 2016-07-15 → 2016-10-21 |
| 20 | **3. 설계단계** | 2016-06-16 A → 2016-10-24 A (+130d) | 2016-09-19 → 2016-12-02 (+74d) | 64d → 30d | 6% → 19% | 73d → none | baseline start 2016-07-11 → 2016-10-24; baseline finish 2016-09-19 → 2016-12-02 |
| 21 | **3.1 To-Be 모델링** | 2016-06-16 A → 2016-10-24 A (+130d) | 2016-06-22 A → 2016-10-26 A (+126d) | 5d → 3d |  |  | baseline start 2016-07-18 → 2016-10-24; baseline finish 2016-07-20 → 2016-10-26 |
| 22 | 3.1.1 전체 프로세스 정의 | 2016-06-22 A → 2016-10-24 A (+124d) | 2016-06-22 A → 2016-10-24 A (+124d) |  |  |  | constraint start no earlier than 2016-07-18 → finish no earlier than 2016-10-24; baseline start 2016-07-18 → 2016-10-24; baseline finish 2016-07-18 → 2016-10-24 |
| 23 | 3.1.2 단위 프로세스 정의 | 2016-06-16 A → 2016-10-25 A (+131d) | 2016-06-22 A → 2016-10-26 A (+126d) | 5d → 2d |  |  | constraint start no earlier than 2016-07-19 → finish no earlier than 2016-10-26; baseline start 2016-07-19 → 2016-10-25; baseline finish 2016-07-20 → 2016-10-26 |
| 24 | **3.2 화면설계** | 2016-07-21 → 2016-10-27 A (+98d) | 2016-08-25 → 2016-11-30 (+97d) |  | 0% → 32% | 87d → none | baseline start 2016-07-21 → 2016-10-27; baseline finish 2016-08-25 → 2016-11-30 |
| 25 | 3.2.1 프로그램 목록 정의 | 2016-07-21 → 2016-10-27 A (+98d) | 2016-07-22 → 2016-10-27 A (+97d) | 2d → 1d | 0% → 100% | 110d → none | constraint start no earlier than 2016-07-21 → start no earlier than 2016-10-27; baseline start 2016-07-21 → 2016-10-27; baseline finish 2016-07-22 → 2016-10-27 |
| 26 | 3.2.2 화면 UI 설계 | 2016-07-25 → 2016-10-28 A (+95d) | 2016-07-29 → 2016-11-03 A (+97d) |  | 0% → 100% | 105d → none | constraint start no earlier than 2016-07-25 → start no earlier than 2016-10-28; baseline start 2016-07-25 → 2016-10-28; baseline finish 2016-07-29 → 2016-11-03 |
| 27 | 3.2.3 프로그램 설계 | 2016-08-01 → 2016-11-04 A (+95d) | 2016-08-19 → 2016-11-23 (+96d) |  | 0% → 8% | 91d → 77d | constraint start no earlier than 2016-08-01 → start no earlier than 2016-11-04; baseline start 2016-08-01 → 2016-11-04; baseline finish 2016-08-19 → 2016-11-23 |
| 28 | 3.2.4 Stored Procedure 목록 정의 | 2016-08-22 → 2016-11-24 (+94d) | 2016-08-25 → 2016-11-25 (+92d) | 4d → 2d |  | 87d → 75d | constraint start no earlier than 2016-08-22 → finish no earlier than 2016-11-25; baseline start 2016-08-22 → 2016-11-24; baseline finish 2016-08-25 → 2016-11-25 |
| 29 | **3.3 테이블설계** | 2016-08-01 → 2016-11-28 (+119d) | 2016-08-05 → 2016-12-02 (+119d) |  |  | 100d → none | baseline start 2016-08-01 → 2016-11-28; baseline finish 2016-08-05 → 2016-12-02 |
| 30 | 3.3.1 테이블 목록 정의 | 2016-08-01 → 2016-11-28 (+119d) | 2016-08-01 → 2016-11-28 (+119d) |  |  | 104d → 74d | constraint start no earlier than 2016-08-01 → start no earlier than 2016-11-28; baseline start 2016-08-01 → 2016-11-28; baseline finish 2016-08-01 → 2016-11-28 |
| 31 | 3.3.2 테이블 설계 | 2016-08-02 → 2016-11-29 (+119d) | 2016-08-05 → 2016-12-02 (+119d) |  |  | 100d → 70d | constraint start no earlier than 2016-08-02 → start no earlier than 2016-11-29; baseline start 2016-08-02 → 2016-11-29; baseline finish 2016-08-05 → 2016-12-02 |
| 32 | 3.4 PDA 설계 | 2016-09-01 → 2016-12-05 (+95d) | 2016-09-19 → 2016-12-16 (+88d) |  |  | 73d → 60d | was named 3.5 PDA 설계; constraint start no earlier than 2016-09-01 → start no earlier than 2016-12-05; baseline start 2016-09-01 → 2016-12-05; baseline finish 2016-09-19 → 2016-12-16 |
| 33 | 3.5 인터페이스 설계 | 2016-09-01 → 2016-11-14 (+74d) | 2016-09-19 → 2016-11-25 (+67d) |  |  | 73d → 75d | was named 3.6 인터페이스 설계; constraint start no earlier than 2016-09-01 → start no earlier than 2016-11-14; baseline start 2016-09-01 → 2016-11-14; baseline finish 2016-09-19 → 2016-11-25 |
| 34 | 3.6 설계 검토 및 확정 | 2016-08-29 → 2016-12-01 (+94d) | 2016-08-30 → 2016-12-01 (+93d) | 2d → 1d |  | 84d → 71d | was named 3.7 설계 검토 및 확정; constraint start no earlier than 2016-08-29 → finish no earlier than 2016-12-01; baseline start 2016-08-29 → 2016-12-01; baseline finish 2016-08-30 → 2016-12-01 |
| 35 | 3.7 중간 설계보고 | 2016-08-31 → 2016-12-02 (+93d) | 2016-08-31 → 2016-12-02 (+93d) |  |  | 83d → 70d | was named 3.8 중간 설계보고; constraint start no earlier than 2016-08-31 → finish no earlier than 2016-12-02; baseline start 2016-08-31 → 2016-12-02; baseline finish 2016-08-31 → 2016-12-02 |
| 36 | **4. 구현단계** | 2016-09-01 → 2016-12-05 (+95d) | 2016-11-30 → 2017-02-28 (+90d) | 61d → 59d |  | 22d → none | baseline start 2016-09-01 → 2016-12-05; baseline finish 2016-11-30 → 2017-02-28 |
| 37 | 4.1 개발 일정 계획 | 2016-09-01 → 2016-12-05 (+95d) | 2016-09-02 → 2016-12-05 (+94d) | 2d → 1d |  | 81d → 69d | constraint start no earlier than 2016-09-01 → finish no earlier than 2016-12-05; baseline start 2016-09-01 → 2016-12-05; baseline finish 2016-09-02 → 2016-12-05 |
| 38 | **4.2 프로그램 개발** | 2016-09-01 → 2016-12-06 (+96d) | 2016-11-11 → 2017-02-15 (+96d) | 48d → 49d |  | 35d → none | baseline start 2016-09-01 → 2016-12-06; baseline finish 2016-11-11 → 2017-02-15 |
| 39 | 4.2.1 마스터관리 | 2016-09-01 → 2016-12-06 (+96d) | 2016-09-23 → 2016-12-23 (+91d) |  |  | 69d → 55d | constraint start no earlier than 2016-09-01 → finish no earlier than 2016-12-23; baseline start 2016-09-01 → 2016-12-06; baseline finish 2016-09-23 → 2016-12-23 |
| 40 | 4.2.2 입고관리 | 2016-09-19 → 2016-12-19 (+91d) | 2016-10-14 → 2017-01-16 (+94d) | 19d → 21d |  | 55d → 39d | constraint start no earlier than 2016-09-19 → finish no earlier than 2017-01-16; baseline start 2016-09-19 → 2016-12-19; baseline finish 2016-10-14 → 2017-01-16 |
| 41 | 4.2.3 출고관리 | 2016-09-26 → 2016-12-26 (+91d) | 2016-11-11 → 2017-02-14 (+95d) |  |  | 35d → 21d | constraint start no earlier than 2016-09-26 → finish no earlier than 2017-02-14; baseline start 2016-09-26 → 2016-12-26; baseline finish 2016-11-11 → 2017-02-14 |
| 42 | 4.2.4 재고관리 | 2016-10-17 → 2017-01-16 (+91d) | 2016-11-11 → 2017-02-14 (+95d) | 20d → 19d |  | 35d → 21d | constraint start no earlier than 2016-10-17 → finish no earlier than 2017-02-14; baseline start 2016-10-17 → 2017-01-16; baseline finish 2016-11-11 → 2017-02-14 |
| 43 | 4.2.5 PDA | 2016-09-19 → 2016-12-19 (+91d) | 2016-11-11 → 2017-02-14 (+95d) |  |  | 35d → 21d | constraint start no earlier than 2016-09-19 → finish no earlier than 2017-02-14; baseline start 2016-09-19 → 2016-12-19; baseline finish 2016-11-11 → 2017-02-14 |
| 44 | 4.2.6 인터페이스 | 2016-09-19 → 2016-12-01 (+73d) | 2016-11-11 → 2017-02-14 (+95d) | 39d → 51d |  | 35d → 21d | constraint start no earlier than 2016-09-19 → finish no earlier than 2017-02-14; baseline start 2016-09-19 → 2016-12-01; baseline finish 2016-11-11 → 2017-02-14 |
| 45 | **4.3 매뉴얼 작성** | 2016-11-21 → 2017-02-17 (+88d) | 2016-11-30 → 2017-02-28 (+90d) |  |  | 22d → none | baseline start 2016-11-21 → 2017-02-17; baseline finish 2016-11-30 → 2017-02-28 |
| 46 | 4.3.1 사용자 매뉴얼 작성 | 2016-11-21 → 2017-02-17 (+88d) | 2016-11-25 → 2017-02-23 (+90d) |  |  | 25d → 14d | constraint start no earlier than 2016-11-21 → finish no earlier than 2017-02-23; baseline start 2016-11-21 → 2017-02-17; baseline finish 2016-11-25 → 2017-02-23 |
| 47 | 4.3.2 운영자 매뉴얼 작성 | 2016-11-28 → 2017-02-24 (+88d) | 2016-11-30 → 2017-02-28 (+90d) |  |  | 22d → 11d | constraint start no earlier than 2016-11-28 → start no earlier than 2017-02-24; baseline start 2016-11-28 → 2017-02-24; baseline finish 2016-11-30 → 2017-02-28 |
| 48 | **5. 테스트단계** | 2016-09-19 → 2016-12-06 (+78d) | 2016-11-30 → 2017-03-14 (+104d) | 52d → 67d |  | 22d → none | baseline start 2016-09-19 → 2016-12-06; baseline finish 2016-11-30 → 2017-03-14 |
| 49 | 5.1 단위 테스트 | 2016-09-19 → 2016-12-06 (+78d) | 2016-11-11 → 2017-02-14 (+95d) | 39d → 48d |  | 35d → 21d | constraint start no earlier than 2016-09-19 → finish no earlier than 2017-02-14; baseline start 2016-09-19 → 2016-12-06; baseline finish 2016-11-11 → 2017-02-14 |
| 50 | **5.2 통합 테스트** | 2016-11-01 → 2017-02-01 (+92d) | 2016-11-25 → 2017-03-14 (+109d) | 19d → 29d |  | 25d → none | baseline start 2016-11-01 → 2017-02-01; baseline finish 2016-11-25 → 2017-03-14 |
| 51 | 5.2.1 통합테스트 시나리오 작성 | 2016-11-01 → 2017-02-01 (+92d) | 2016-11-11 → 2017-02-14 (+95d) | 9d → 10d |  | 35d → 21d | constraint finish no earlier than 2016-11-11 → finish no earlier than 2017-02-14; baseline start 2016-11-01 → 2017-02-01; baseline finish 2016-11-11 → 2017-02-14 |
| 52 | 5.2.2 통합테스트 실시 | 2016-11-14 → 2017-02-15 (+93d) | 2016-11-25 → 2017-02-21 (+88d) | 10d → 5d |  | 25d → 16d | constraint start no earlier than 2016-11-14 → finish no earlier than 2017-02-21; baseline start 2016-11-14 → 2017-02-15; baseline finish 2016-11-25 → 2017-02-21 |
| 53 | 5.2.3 통합테스트 결과서 작성 | 2016-11-14 → 2017-02-15 (+93d) | 2016-11-25 → 2017-02-21 (+88d) | 10d → 5d |  | 25d → 16d | constraint finish no earlier than 2016-11-25 → finish no earlier than 2017-02-21; baseline start 2016-11-14 → 2017-02-15; baseline finish 2016-11-25 → 2017-02-21 |
| 54 | 5.3 운영자 및 사용자 교육 | 2016-11-28 → 2017-02-22 (+86d) | 2016-11-30 → 2017-02-23 (+85d) | 3d → 2d |  | 22d → 14d | constraint start no earlier than 2016-11-28 → finish no earlier than 2017-02-23; baseline start 2016-11-28 → 2017-02-22; baseline finish 2016-11-30 → 2017-02-23 |
| 55 | 5.4 시스템 적용 계획 수립 | 2016-11-28 → 2017-02-24 (+88d) | 2016-11-30 → 2017-02-28 (+90d) |  |  | 22d → 11d | constraint start no earlier than 2016-11-28 → finish no earlier than 2017-02-28; baseline start 2016-11-28 → 2017-02-24; baseline finish 2016-11-30 → 2017-02-28 |
| 56 | 5.5 테스트 결과 검토 및 확정 | 2016-11-28 → 2017-02-27 (+91d) | 2016-11-30 → 2017-02-28 (+90d) | 3d → 2d |  | 22d → 11d | constraint start no earlier than 2016-11-28 → finish no earlier than 2017-02-28; baseline start 2016-11-28 → 2017-02-27; baseline finish 2016-11-30 → 2017-02-28 |
| 57 | **6. 운영단계** | 2016-12-01 → 2017-03-02 (+91d) | 2016-12-16 → 2017-03-16 (+90d) | 12d → 11d |  | 10d → none | baseline start 2016-12-01 → 2017-03-02; baseline finish 2016-12-16 → 2017-03-16 |
| 58 | 6.1 시스템 오픈 | 2016-12-01 → 2017-03-02 (+91d) | 2016-12-02 → 2017-03-02 (+90d) | 2d → 1d |  | 20d → 10d | constraint start no earlier than 2016-12-01 → finish no earlier than 2017-03-02; baseline start 2016-12-01 → 2017-03-02; baseline finish 2016-12-02 → 2017-03-02 |
| 59 | 6.2 시스템 안정화 | 2016-12-01 → 2017-03-02 (+91d) | 2016-12-16 → 2017-03-16 (+90d) | 12d → 11d |  | 10d → 0d | constraint start no earlier than 2016-12-01 → finish no earlier than 2017-03-16; baseline start 2016-12-01 → 2017-03-02; baseline finish 2016-12-16 → 2017-03-16 |
| 60 | 6.3 산출물 인도 | 2016-12-16 → 2017-03-16 (+90d) | 2016-12-16 → 2017-03-16 (+90d) |  |  | 10d → 0d | constraint start no earlier than 2016-12-16 → finish no earlier than 2017-03-16; baseline start 2016-12-16 → 2017-03-16; baseline finish 2016-12-16 → 2017-03-16 |
| 61 | 6.4 최종 완료보고 | 2016-12-16 → 2017-03-16 (+90d) | 2016-12-16 → 2017-03-16 (+90d) |  |  | 10d → 0d | constraint start no earlier than 2016-12-16 → finish no earlier than 2017-03-16; baseline start 2016-12-16 → 2017-03-16; baseline finish 2016-12-16 → 2017-03-16 |

## Version 3 (data date 2016-11-18, saved 2016-11-18, file C2300_프로젝트일정(WBS)_20161118_v0.6.mpp)

Note of the change: study 스프링 시큐리티 각 시점별 보안

Last finish stays 2017-03-16.

Changed:

| ID | Task | Start | Finish | Duration | Complete | Total float |
| --- | --- | --- | --- | --- | --- | --- |
| 1 | **창고관리시스템(WMS) 구축** |  |  |  | 9% → 13% |  |
| 20 | **3. 설계단계** |  | 2016-12-02 → 2016-12-16 (+14d) | 30d → 40d | 19% → 46% | none → 60d |
| 24 | **3.2 화면설계** |  | 2016-11-30 → 2016-11-25 (-5d) | 25d → 22d | 32% → 81% | none → 75d |
| 27 | 3.2.3 프로그램 설계 |  |  |  | 8% → 85% |  |
| 33 | 3.5 인터페이스 설계 | 2016-11-14 A |  |  | 0% → 30% |  |
| 36 | **4. 구현단계** | 2016-12-05 → 2016-12-01 (-4d) |  | 59d → 61d |  | none → 11d |
| 38 | **4.2 프로그램 개발** | 2016-12-06 → 2016-12-01 (-5d) | 2017-02-15 → 2017-02-14 (-1d) | 49d → 51d |  | none → 21d |
| 48 | **5. 테스트단계** |  | 2017-03-14 → 2017-02-28 (-14d) | 67d → 58d |  | none → 11d |
| 50 | **5.2 통합 테스트** |  | 2017-03-14 → 2017-02-21 (-21d) | 29d → 15d |  | none → 16d |

## Version 4 (data date 2016-11-25, saved 2016-11-25, file C2300_프로젝트일정(WBS)_20161125_v0.6.mpp)

Note of the change: study 스프링 시큐리티 각 시점별 보안

Last finish stays 2017-03-16. Complete tasks 16 → 19.

Changed:

| ID | Task | Start | Finish | Complete | Total float | Other |
| --- | --- | --- | --- | --- | --- | --- |
| 1 | **창고관리시스템(WMS) 구축** |  |  | 13% → 16% |  |  |
| 20 | **3. 설계단계** |  |  | 46% → 67% |  |  |
| 24 | **3.2 화면설계** |  | 2016-11-25 A | 81% → 100% | 75d → none | baseline finish 2016-11-30 → 2016-11-25 |
| 27 | 3.2.3 프로그램 설계 |  | 2016-11-23 A | 85% → 100% | 77d → none |  |
| 28 | 3.2.4 Stored Procedure 목록 정의 | 2016-11-24 A | 2016-11-25 A | 0% → 100% | 75d → none |  |
| 33 | 3.5 인터페이스 설계 |  | 2016-11-25 A | 30% → 100% | 75d → none |  |

## Version 5 (data date 2016-12-02, saved 2016-12-02, file C2300_프로젝트일정(WBS)_20161202_v0.6.mpp)

Note of the change: study 스프링 시큐리티 각 시점별 보안

Last finish stays 2017-03-16.

Changed:

| ID | Task | Start | Finish | Duration | Complete | Total float |
| --- | --- | --- | --- | --- | --- | --- |
| 1 | **창고관리시스템(WMS) 구축** |  |  |  | 16% → 19% |  |
| 20 | **3. 설계단계** |  | 2016-12-16 → 2016-12-09 (-7d) | 40d → 35d | 67% → 83% | 60d → 65d |
| 29 | **3.3 테이블설계** | 2016-11-28 A |  |  | 0% → 84% |  |
| 30 | 3.3.1 테이블 목록 정의 | 2016-11-28 A | 2016-11-28 A |  | 0% → 100% | 74d → none |
| 31 | 3.3.2 테이블 설계 | 2016-11-29 A |  |  | 0% → 80% |  |
| 32 | 3.4 PDA 설계 | 2016-12-05 → 2016-11-28 A (-7d) | 2016-12-16 → 2016-12-09 (-7d) |  | 0% → 50% | 60d → 65d |
| 33 | 3.5 인터페이스 설계 |  | 2016-11-25 A → 2016-11-25 |  | 100% → 80% | none → 75d |
| 34 | 3.6 설계 검토 및 확정 | 2016-12-01 A |  |  | 0% → 70% |  |

## Version 6 (data date 2016-12-09, saved 2016-12-09, file C2300_프로젝트일정(WBS)_20161209_v0.6.mpp)

Note of the change: study 스프링 시큐리티 각 시점별 보안

Last finish stays 2017-03-16. Complete tasks 19 → 22.

Changed:

| ID | Task | Start | Finish | Complete | Total float |
| --- | --- | --- | --- | --- | --- |
| 1 | **창고관리시스템(WMS) 구축** |  |  | 19% → 21% |  |
| 20 | **3. 설계단계** |  |  | 83% → 98% |  |
| 29 | **3.3 테이블설계** |  | 2016-12-02 A | 84% → 100% | 70d → none |
| 31 | 3.3.2 테이블 설계 |  | 2016-12-02 A | 80% → 100% | 70d → none |
| 32 | 3.4 PDA 설계 |  |  | 50% → 90% |  |
| 33 | 3.5 인터페이스 설계 |  | 2016-11-25 A | 80% → 100% | 75d → none |
| 34 | 3.6 설계 검토 및 확정 |  |  | 70% → 90% |  |
| 35 | 3.7 중간 설계보고 | 2016-12-02 → 2016-12-05 A (+3d) | 2016-12-02 → 2016-12-05 A (+3d) | 0% → 100% | 70d → none |

## Version 7 (data date 2016-12-16, saved 2016-12-16, file C2300_프로젝트일정(WBS)_20161216_v0.6.mpp)

Note of the change: study 스프링 시큐리티 각 시점별 보안

Last finish stays 2017-03-16.

Changed:

| ID | Task | Finish | Complete | Total float |
| --- | --- | --- | --- | --- |
| 20 | **3. 설계단계** |  | 98% → 96% |  |
| 24 | **3.2 화면설계** | 2016-11-25 A → 2016-11-25 | 100% → 95% | none → 75d |
| 28 | 3.2.4 Stored Procedure 목록 정의 | 2016-11-25 A → 2016-11-25 | 100% → 50% | none → 75d |
| 34 | 3.6 설계 검토 및 확정 | 2016-12-01 A | 90% → 100% | 71d → none |

## Version 8 (data date 2016-12-30, saved 2017-01-02, file C2300_프로젝트일정(WBS)_20161230_v0.6.mpp)

Note of the change: study 스프링 시큐리티 각 시점별 보안

Last finish stays 2017-03-16.

Changed:

| ID | Task | Complete |
| --- | --- | --- |
| 20 | **3. 설계단계** | 96% → 98% |
| 24 | **3.2 화면설계** | 95% → 99% |
| 28 | 3.2.4 Stored Procedure 목록 정의 | 50% → 90% |

## Version 9 (data date 2017-02-20, saved 2017-02-20, file C2300_프로젝트일정(WBS)_20170220_v0.7.mpp)

Note of the change: study 스프링 시큐리티 각 시점별 보안

Last finish 2017-03-16 → 2017-06-30 (+106d). Complete tasks 22 → 25.

Added:

| ID | Task | Duration | Start | Finish | Constraint |
| --- | --- | --- | --- | --- | --- |
| 42 | 4.2.4 반입관리 | 7d | 2017-03-30 | 2017-04-07 | finish no earlier than 2017-04-07 |
| 43 | 4.2.5 반출관리 | 7d | 2017-04-10 | 2017-04-18 | finish no earlier than 2017-04-18 |
| 45 | 4.2.7 인터페이스 | 14d | 2017-04-19 | 2017-05-10 | start no earlier than 2017-04-19 |
| 47 | 4.2.9 프로시저 | 103d | 2016-12-05 A | 2017-04-28 | start no earlier than 2016-12-05 |

Removed: 44 4.2.6 인터페이스; 54 5.3 운영자 및 사용자 교육; 55 5.4 시스템 적용 계획 수립; 57 6. 운영단계; 58 6.1 시스템 오픈; 59 6.2 시스템 안정화; 60 6.3 산출물 인도; 61 6.4 최종 완료보고

Changed:

| ID | Task | Start | Finish | Duration | Complete | Total float | Other |
| --- | --- | --- | --- | --- | --- | --- | --- |
| 1 | **창고관리시스템(WMS) 구축** |  | 2017-03-16 → 2017-06-30 (+106d) | 119d → 194d | 21% → 33% |  | baseline finish 2017-03-16 → 2017-06-30 |
| 20 | **3. 설계단계** |  | 2016-12-09 → 2016-12-30 A (+21d) | 35d → 50d | 98% → 100% | 65d → none |  |
| 24 | **3.2 화면설계** |  | 2016-11-25 → 2016-12-30 A (+35d) | 22d → 47d | 99% → 100% | 75d → none |  |
| 28 | 3.2.4 Stored Procedure 목록 정의 |  | 2016-11-25 → 2016-12-30 A (+35d) | 2d → 27d | 90% → 100% | 75d → none |  |
| 32 | 3.4 PDA 설계 | 2016-11-28 A → 2016-12-05 A (+7d) | 2016-12-09 → 2016-12-16 A (+7d) |  | 90% → 100% | 65d → none |  |
| 36 | **4. 구현단계** | 2016-12-01 → 2016-12-05 A (+4d) | 2017-02-28 → 2017-06-07 (+99d) | 61d → 128d | 0% → 20% | 11d → 17d | baseline finish 2017-02-28 → 2017-06-07 |
| 37 | 4.1 개발 일정 계획 | 2016-12-05 → 2017-02-16 A (+73d) | 2016-12-05 → 2017-02-16 A (+73d) |  | 0% → 100% | 69d → none | constraint finish no earlier than 2016-12-05 → start no earlier than 2017-02-16; baseline start 2016-12-05 → 2017-02-16; baseline finish 2016-12-05 → 2017-02-16 |
| 38 | **4.2 프로그램 개발** | 2016-12-01 → 2016-12-05 A (+4d) | 2017-02-14 → 2017-05-25 (+100d) | 51d → 120d | 0% → 20% | 21d → 25d | baseline start 2016-12-06 → 2016-12-05; baseline finish 2017-02-15 → 2017-05-25 |
| 39 | 4.2.1 마스터관리 | 2016-12-06 → 2017-02-17 A (+73d) | 2016-12-23 → 2017-03-03 (+70d) | 14d → 11d | 0% → 5% | 55d → 82d | constraint finish no earlier than 2016-12-23 → finish no earlier than 2017-03-03; baseline start 2016-12-06 → 2017-02-17; baseline finish 2016-12-23 → 2017-03-03 |
| 40 | 4.2.2 입고관리 | 2016-12-19 → 2017-03-06 (+77d) | 2017-01-16 → 2017-03-29 (+72d) | 21d → 18d |  | 39d → 64d | constraint finish no earlier than 2017-01-16 → finish no earlier than 2017-03-29; baseline start 2016-12-19 → 2017-03-06; baseline finish 2017-01-16 → 2017-03-29 |
| 41 | 4.2.3 출고관리 | 2016-12-26 → 2017-03-06 (+70d) | 2017-02-14 → 2017-04-07 (+52d) | 34d → 25d |  | 21d → 57d | constraint finish no earlier than 2017-02-14 → finish no earlier than 2017-04-07; baseline start 2016-12-26 → 2017-03-06; baseline finish 2017-02-14 → 2017-04-07 |
| 44 | 4.2.6 재고관리 | 2017-01-16 → 2017-04-11 (+85d) | 2017-02-14 → 2017-05-25 (+100d) | 19d → 31d |  | 21d → 25d | was named 4.2.4 재고관리; constraint finish no earlier than 2017-02-14 → start no earlier than 2017-04-11; baseline start 2017-01-16 → 2017-04-11; baseline finish 2017-02-14 → 2017-05-25 |
| 46 | 4.2.8 PDA | 2016-12-19 → 2017-03-01 (+72d) | 2017-02-14 → 2017-04-28 (+73d) | 39d → 43d |  | 21d → 42d | was named 4.2.5 PDA; constraint finish no earlier than 2017-02-14 → finish no earlier than 2017-04-28; baseline start 2016-12-19 → 2017-03-01; baseline finish 2017-02-14 → 2017-04-28 |
| 48 | **4.3 매뉴얼 작성** | 2017-02-17 → 2017-05-29 (+101d) | 2017-02-28 → 2017-06-07 (+99d) | 8d → 7d |  | 11d → 17d | baseline start 2017-02-17 → 2017-05-29; baseline finish 2017-02-28 → 2017-06-07 |
| 49 | 4.3.1 사용자 매뉴얼 작성 | 2017-02-17 → 2017-05-29 (+101d) | 2017-02-23 → 2017-06-02 (+99d) |  |  | 14d → 19d | constraint finish no earlier than 2017-02-23 → start no earlier than 2017-05-29; baseline start 2017-02-17 → 2017-05-29; baseline finish 2017-02-23 → 2017-06-02 |
| 50 | 4.3.2 운영자 매뉴얼 작성 | 2017-02-24 → 2017-06-05 (+101d) | 2017-02-28 → 2017-06-07 (+99d) | 3d → 2d |  | 11d → 17d | constraint start no earlier than 2017-02-24 → start no earlier than 2017-06-05; baseline start 2017-02-24 → 2017-06-05; baseline finish 2017-02-28 → 2017-06-07 |
| 51 | **5. 테스트단계** | 2016-12-06 → 2017-02-27 (+83d) | 2017-02-28 → 2017-06-30 (+122d) | 58d → 87d |  | 11d → 0d | baseline start 2016-12-06 → 2017-02-27; baseline finish 2017-03-14 → 2017-06-30 |
| 52 | 5.1 단위 테스트 | 2016-12-06 → 2017-02-27 (+83d) | 2017-02-14 → 2017-05-26 (+101d) | 48d → 63d |  | 21d → 24d | constraint finish no earlier than 2017-02-14 → start no earlier than 2017-02-27; baseline start 2016-12-06 → 2017-02-27; baseline finish 2017-02-14 → 2017-05-26 |
| 53 | **5.2 통합 테스트** | 2017-02-01 → 2017-05-15 (+103d) | 2017-02-21 → 2017-05-31 (+99d) | 15d → 13d |  | 16d → 21d | baseline start 2017-02-01 → 2017-05-15; baseline finish 2017-03-14 → 2017-05-31 |
| 54 | 5.2.1 통합테스트 시나리오 작성 | 2017-02-01 → 2017-05-15 (+103d) | 2017-02-14 → 2017-05-26 (+101d) |  |  | 21d → 24d | constraint finish no earlier than 2017-02-14 → start no earlier than 2017-05-15; baseline start 2017-02-01 → 2017-05-15; baseline finish 2017-02-14 → 2017-05-26 |
| 55 | 5.2.2 통합테스트 실시 | 2017-02-15 → 2017-05-29 (+103d) | 2017-02-21 → 2017-05-31 (+99d) | 5d → 3d |  | 16d → 21d | constraint finish no earlier than 2017-02-21 → finish no earlier than 2017-05-31; baseline start 2017-02-15 → 2017-05-29; baseline finish 2017-02-21 → 2017-05-31 |
| 56 | 5.2.3 통합테스트 결과서 작성 | 2017-02-15 → 2017-05-29 (+103d) | 2017-02-21 → 2017-05-31 (+99d) | 5d → 3d |  | 16d → 21d | constraint finish no earlier than 2017-02-21 → finish no earlier than 2017-05-31; baseline start 2017-02-15 → 2017-05-29; baseline finish 2017-02-21 → 2017-05-31 |
| 57 | 5.3 테스트 결과 검토 및 확정 | 2017-02-27 → 2017-05-31 (+93d) | 2017-02-28 → 2017-06-30 (+122d) | 2d → 22d |  | 11d → 0d | was named 5.5 테스트 결과 검토 및 확정; constraint finish no earlier than 2017-02-28 → finish no earlier than 2017-06-30; baseline start 2017-02-27 → 2017-05-31; baseline finish 2017-02-28 → 2017-06-30 |

## Version 10 (data date 2017-02-27, saved 2017-02-27, file C2300_프로젝트일정(WBS)_20170227_v0.7.mpp)

Note of the change: study 스프링 시큐리티 각 시점별 보안

Last finish stays 2017-06-30.

Changed:

| ID | Task | Complete |
| --- | --- | --- |
| 1 | **창고관리시스템(WMS) 구축** | 33% → 34% |
| 36 | **4. 구현단계** | 20% → 23% |
| 38 | **4.2 프로그램 개발** | 20% → 23% |
| 39 | 4.2.1 마스터관리 | 5% → 23% |
| 47 | 4.2.9 프로시저 | 51% → 56% |

## Version 11 (data date 2017-03-13, saved 2017-03-13, file C2300_프로젝트일정(WBS)_20170313_v0.7.mpp)

Note of the change: study 스프링 시큐리티 각 시점별 보안

Last finish stays 2017-06-30.

Added:

| ID | Task | Duration | Start | Finish | Constraint |
| --- | --- | --- | --- | --- | --- |
| 57 | 5.3 프로그램 개발2차(조회,레포트) | 36d | 2017-05-11 | 2017-06-30 | finish no earlier than 2017-06-30 |

Changed:

| ID | Task | Complete | Other |
| --- | --- | --- | --- |
| 1 | **창고관리시스템(WMS) 구축** | 34% → 35% |  |
| 20 | **3. 설계단계** |  | baseline finish 2016-12-02 → 2016-12-30 |
| 24 | **3.2 화면설계** |  | baseline finish 2016-11-25 → 2016-12-30 |
| 28 | 3.2.4 Stored Procedure 목록 정의 |  | baseline finish 2016-11-25 → 2016-12-30 |
| 36 | **4. 구현단계** | 23% → 30% |  |
| 38 | **4.2 프로그램 개발(1차)** | 23% → 30% | was named 4.2 프로그램 개발 |
| 39 | 4.2.1 마스터관리 | 23% → 95% |  |
| 47 | 4.2.9 프로시저 | 56% → 66% |  |
| 52 | 5.1 단위 테스트 |  | baseline start 2017-02-27 → 2017-03-13 |
| 58 | 5.4 테스트 결과 검토 및 확정 |  | was named 5.3 테스트 결과 검토 및 확정 |

## Version 12 (data date 2017-05-22, saved 2017-05-19, file C2300_프로젝트일정(WBS)_20170519_v0.7.mpp)

Note of the change: study 스프링 시큐리티 각 시점별 보안

Last finish stays 2017-06-30. Complete tasks 25 → 30.

Changed:

| ID | Task | Start | Finish | Duration | Complete | Total float |
| --- | --- | --- | --- | --- | --- | --- |
| 1 | **창고관리시스템(WMS) 구축** |  |  |  | 35% → 66% |  |
| 36 | **4. 구현단계** |  |  |  | 30% → 79% |  |
| 38 | **4.2 프로그램 개발(1차)** |  | 2017-05-25 → 2017-05-31 (+6d) | 120d → 124d | 30% → 81% | 25d → 21d |
| 39 | 4.2.1 마스터관리 |  | 2017-03-03 → 2017-03-13 A (+10d) | 11d → 17d | 95% → 100% | 82d → none |
| 40 | 4.2.2 입고관리 | 2017-03-06 → 2017-03-15 A (+9d) | 2017-03-29 → 2017-04-03 A (+5d) | 18d → 14d | 0% → 100% | 64d → none |
| 41 | 4.2.3 출고관리 | 2017-03-06 → 2017-03-16 A (+10d) | 2017-04-07 → 2017-04-19 A (+12d) |  | 0% → 100% | 57d → none |
| 42 | 4.2.4 반입관리 | 2017-03-30 → 2017-04-04 A (+5d) | 2017-04-07 → 2017-04-10 A (+3d) | 7d → 5d | 0% → 100% | 57d → none |
| 43 | 4.2.5 반출관리 | 2017-04-10 → 2017-04-25 A (+15d) | 2017-04-18 → 2017-05-12 A (+24d) | 7d → 12d | 0% → 100% | 50d → none |
| 44 | 4.2.6 재고관리 | 2017-04-11 → 2017-04-17 A (+6d) | 2017-05-25 → 2017-05-31 (+6d) |  | 0% → 23% | 25d → 21d |
| 45 | 4.2.7 인터페이스 | 2017-04-19 A |  |  | 0% → 43% |  |
| 46 | 4.2.8 PDA | 2017-03-01 A |  |  | 0% → 83% |  |
| 47 | 4.2.9 프로시저 |  |  |  | 66% → 90% |  |
| 51 | **5. 테스트단계** | 2017-02-27 → 2017-03-10 A (+11d) |  | 87d → 78d | 0% → 17% |  |
| 52 | 5.1 단위 테스트 | 2017-02-27 → 2017-03-10 A (+11d) | 2017-05-26 → 2017-06-09 (+14d) |  | 0% → 30% | 24d → 15d |
| 57 | 5.3 프로그램 개발2차(조회,레포트) | 2017-05-11 → 2017-04-18 A (-23d) |  |  | 0% → 11% |  |
