# C2300_프로젝트일정(WBS)_20160610_v.0.1

How a schedule from MS Project changed from version to version. A marks actual dates.

## Version 1 (data date 2016-06-10, saved 2016-06-17, file C2300_프로젝트일정(WBS)_20160617_v0.2.mpp)

Note of the change: study 스프링 시큐리티 각 시점별 보안

| ID | WBS | Task | Duration | Start | Finish | Complete | Total float | Constraint |
| --- | --- | --- | --- | --- | --- | --- | --- | --- |
| 1 | 1 | **창고관리시스템(WMS) 구축** | 131d | 2016-06-10 A | 2016-12-16 | 1% | 10d |  |
| 2 | 1.1 | **1. 준비단계** | 16d | 2016-06-10 A | 2016-07-01 | 37% | 125d |  |
| 3 | 1.1.1 | **1.1 프로젝트 착수** | 12d | 2016-06-16 A | 2016-07-01 | 29% | 125d |  |
| 4 |  | 1.1.1 프로젝트 조직 구성 | 5d | 2016-06-27 | 2016-07-01 |  | 125d | start no earlier than 2016-06-27 |
| 5 |  | 1.1.2 개발 산출물 목록 작성 | 1d | 2016-06-16 A | 2016-06-16 A | 100% |  | start no earlier than 2016-06-27 |
| 6 |  | 1.1.3 산출물 표준 Template 작성 | 1d | 2016-06-16 A | 2016-06-16 A | 100% |  | start no earlier than 2016-06-27 |
| 7 | 1.1.2 | **1.2 프로젝트 계획수립** | 15d | 2016-06-10 A | 2016-06-30 | 48% | 126d |  |
| 8 |  | 1.2.1 WBS & Schedule 작성(상세화) | 2d | 2016-06-10 A | 2016-06-13 | 50% | 139d | start no earlier than 2016-06-29 |
| 9 |  | 1.2.2 프로젝트 계획서 작성 | 2d | 2016-06-10 A | 2016-06-13 | 70% | 139d | start no earlier than 2016-06-29 |
| 10 |  | 1.2.3 kick off 미팅 | 1d | 2016-06-30 | 2016-06-30 |  | 126d | start no earlier than 2016-06-30 |
| 11 | 1.2 | **2. 분석단계** | 11d | 2016-07-01 | 2016-07-15 |  | 115d |  |
| 12 | 1.2.1 | **2.1 AS-IS 분석** | 6d | 2016-07-01 | 2016-07-08 |  | 120d |  |
| 13 |  | 2.1.1 업무 파악 | 3d | 2016-07-01 | 2016-07-05 |  | 123d | start no earlier than 2016-07-01 |
| 14 |  | 2.1.2 업무 분석(사례분석) | 3d | 2016-07-06 | 2016-07-08 |  | 120d | start no earlier than 2016-07-06 |
| 15 | 1.2.2 | **2.2 요건 정의** | 5d | 2016-07-11 | 2016-07-15 |  | 115d |  |
| 16 |  | 2.2.1 솔루션 Needs 분석 | 1d | 2016-07-11 | 2016-07-11 |  | 119d | start no earlier than 2016-07-11 |
| 17 |  | 2.2.2 요구사항 정의서 작성 | 3d | 2016-07-12 | 2016-07-14 |  | 116d | start no earlier than 2016-07-12 |
| 18 |  | 2.2.3 요구사항 정의 Review | 1d | 2016-07-15 | 2016-07-15 |  | 115d | start no earlier than 2016-07-15 |
| 19 |  | 2.3 검토 | 1d | 2016-07-15 | 2016-07-15 |  | 115d | start no earlier than 2016-07-15 |
| 20 | 1.3 | **3. 설계단계** | 47d | 2016-07-11 | 2016-09-19 |  | 73d |  |
| 21 | 1.3.1 | **3.1 To-Be 모델링** | 3d | 2016-07-18 | 2016-07-20 |  | 112d |  |
| 22 |  | 3.1.1 전체 프로세스 정의 | 1d | 2016-07-18 | 2016-07-18 |  | 114d | start no earlier than 2016-07-18 |
| 23 |  | 3.1.2 단위 프로세스 정의 | 2d | 2016-07-19 | 2016-07-20 |  | 112d | start no earlier than 2016-07-19 |
| 24 | 1.3.2 | **3.2 화면설계** | 25d | 2016-07-21 | 2016-08-25 |  | 87d |  |
| 25 |  | 3.2.1 프로그램 목록 정의 | 2d | 2016-07-21 | 2016-07-22 |  | 110d | start no earlier than 2016-07-21 |
| 26 |  | 3.2.2 화면 UI 설계 | 5d | 2016-07-25 | 2016-07-29 |  | 105d | start no earlier than 2016-07-25 |
| 27 |  | 3.2.3 프로그램 설계 | 14d | 2016-08-01 | 2016-08-19 |  | 91d | start no earlier than 2016-08-01 |
| 28 |  | 3.2.4 Stored Procedure 목록 정의 | 4d | 2016-08-22 | 2016-08-25 |  | 87d | start no earlier than 2016-08-22 |
| 29 | 1.3.3 | **3.3 테이블설계** | 5d | 2016-08-01 | 2016-08-05 |  | 100d |  |
| 30 |  | 3.3.1 테이블 목록 정의 | 1d | 2016-08-01 | 2016-08-01 |  | 104d | start no earlier than 2016-08-01 |
| 31 |  | 3.3.2 테이블 설계 | 4d | 2016-08-02 | 2016-08-05 |  | 100d | start no earlier than 2016-08-02 |
| 32 | 1.3.4 | **3.4 Framework 설계** | 37d | 2016-07-11 | 2016-08-31 |  | 83d |  |
| 33 |  | 3.4.1 Framework 구성 | 3d | 2016-07-11 | 2016-07-13 |  | 117d | start no earlier than 2016-07-11 |
| 34 |  | 3.4.2 공통 Function 설계 | 5d | 2016-07-14 | 2016-07-20 |  | 112d | start no earlier than 2016-07-14 |
| 35 |  | 3.4.3 Framework 개발 | 29d | 2016-07-21 | 2016-08-31 |  | 83d | finish no earlier than 2016-08-31 |
| 36 |  | 3.4.3 디자인 시안 | 4d | 2016-08-16 | 2016-08-19 |  | 91d | start no earlier than 2016-08-15 |
| 37 |  | 3.5 PDA 설계 | 10d | 2016-09-01 | 2016-09-19 |  | 73d | start no earlier than 2016-09-01 |
| 38 |  | 3.6 인터페이스 설계 | 10d | 2016-09-01 | 2016-09-19 |  | 73d | start no earlier than 2016-09-01 |
| 39 |  | 3.7 설계 검토 및 확정 | 2d | 2016-08-29 | 2016-08-30 |  | 84d | start no earlier than 2016-08-29 |
| 40 |  | 3.8 중간 설계보고 | 1d | 2016-08-31 | 2016-08-31 |  | 83d | start no earlier than 2016-08-31 |
| 41 | 1.4 | **4. 구현단계** | 61d | 2016-09-01 | 2016-11-30 |  | 22d |  |
| 42 |  | 4.1 개발 일정 계획 | 2d | 2016-09-01 | 2016-09-02 |  | 81d | start no earlier than 2016-09-01 |
| 43 | 1.4.2 | **4.2 프로그램 개발** | 48d | 2016-09-01 | 2016-11-11 |  | 35d |  |
| 44 |  | 4.2.1 마스터관리 | 14d | 2016-09-01 | 2016-09-23 |  | 69d | start no earlier than 2016-09-01 |
| 45 |  | 4.2.2 입고관리 | 19d | 2016-09-19 | 2016-10-14 |  | 55d | start no earlier than 2016-09-19 |
| 46 |  | 4.2.3 출고관리 | 34d | 2016-09-26 | 2016-11-11 |  | 35d | start no earlier than 2016-09-26 |
| 47 |  | 4.2.4 재고관리 | 20d | 2016-10-17 | 2016-11-11 |  | 35d | start no earlier than 2016-10-17 |
| 48 |  | 4.2.5 PDA | 39d | 2016-09-19 | 2016-11-11 |  | 35d | start no earlier than 2016-09-19 |
| 49 |  | 4.2.6 인터페이스 | 39d | 2016-09-19 | 2016-11-11 |  | 35d | start no earlier than 2016-09-19 |
| 50 | 1.4.3 | **4.3 매뉴얼 작성** | 8d | 2016-11-21 | 2016-11-30 |  | 22d |  |
| 51 |  | 4.3.1 사용자 매뉴얼 작성 | 5d | 2016-11-21 | 2016-11-25 |  | 25d | start no earlier than 2016-11-21 |
| 52 |  | 4.3.2 운영자 매뉴얼 작성 | 3d | 2016-11-28 | 2016-11-30 |  | 22d | start no earlier than 2016-11-28 |
| 53 | 1.5 | **5. 테스트단계** | 52d | 2016-09-19 | 2016-11-30 |  | 22d |  |
| 54 |  | 5.1 단위 테스트 | 39d | 2016-09-19 | 2016-11-11 |  | 35d | start no earlier than 2016-09-19 |
| 55 | 1.5.2 | **5.2 통합 테스트** | 19d | 2016-11-01 | 2016-11-25 |  | 25d |  |
| 56 |  | 5.2.1 통합테스트 시나리오 작성 | 9d | 2016-11-01 | 2016-11-11 |  | 35d | finish no earlier than 2016-11-11 |
| 57 |  | 5.2.2 통합테스트 실시 | 10d | 2016-11-14 | 2016-11-25 |  | 25d | start no earlier than 2016-11-14 |
| 58 |  | 5.2.3 통합테스트 결과서 작성 | 10d | 2016-11-14 | 2016-11-25 |  | 25d | finish no earlier than 2016-11-25 |
| 59 |  | 5.3 운영자 및 사용자 교육 | 3d | 2016-11-28 | 2016-11-30 |  | 22d | start no earlier than 2016-11-28 |
| 60 |  | 5.4 시스템 적용 계획 수립 | 3d | 2016-11-28 | 2016-11-30 |  | 22d | start no earlier than 2016-11-28 |
| 61 |  | 5.5 테스트 결과 검토 및 확정 | 3d | 2016-11-28 | 2016-11-30 |  | 22d | start no earlier than 2016-11-28 |
| 62 | 1.6 | **6. 운영단계** | 12d | 2016-12-01 | 2016-12-16 |  | 10d |  |
| 63 |  | 6.1 시스템 오픈 | 2d | 2016-12-01 | 2016-12-02 |  | 20d | start no earlier than 2016-12-01 |
| 64 |  | 6.2 시스템 안정화 | 12d | 2016-12-01 | 2016-12-16 |  | 10d | start no earlier than 2016-12-01 |
| 65 |  | 6.3 산출물 인도 | 1d | 2016-12-16 | 2016-12-16 |  | 10d | start no earlier than 2016-12-16 |
| 66 |  | 6.4 최종 완료보고 | 1d | 2016-12-16 | 2016-12-16 |  | 10d | start no earlier than 2016-12-16 |

## Version 2 (data date 2016-06-24, saved 2016-06-24, file C2300_프로젝트일정(WBS)_20160624_v0.2.mpp)

Note of the change: study 스프링 시큐리티 각 시점별 보안

Last finish stays 2016-12-16. Complete tasks 2 → 6.

Changed:

| ID | Task | Start | Finish | Duration | Complete | Total float |
| --- | --- | --- | --- | --- | --- | --- |
| 1 | **창고관리시스템(WMS) 구축** |  |  |  | 1% → 4% |  |
| 2 | **1. 준비단계** |  |  |  | 37% → 63% |  |
| 7 | **1.2 프로젝트 계획수립** |  |  |  | 48% → 89% |  |
| 8 | 1.2.1 WBS & Schedule 작성(상세화) |  | 2016-06-13 → 2016-06-15 A (+2d) | 2d → 4d | 50% → 100% | 139d → none |
| 9 | 1.2.2 프로젝트 계획서 작성 |  | 2016-06-13 → 2016-06-15 A (+2d) | 2d → 4d | 70% → 100% | 139d → none |
| 20 | **3. 설계단계** | 2016-07-11 → 2016-06-16 A (-25d) |  | 47d → 64d | 0% → 6% |  |
| 21 | **3.1 To-Be 모델링** | 2016-07-18 → 2016-06-16 A (-32d) | 2016-07-20 → 2016-06-22 A (-28d) | 3d → 5d | 0% → 100% | 112d → none |
| 22 | 3.1.1 전체 프로세스 정의 | 2016-07-18 → 2016-06-22 A (-26d) | 2016-07-18 → 2016-06-22 A (-26d) |  | 0% → 100% | 114d → none |
| 23 | 3.1.2 단위 프로세스 정의 | 2016-07-19 → 2016-06-16 A (-33d) | 2016-07-20 → 2016-06-22 A (-28d) | 2d → 5d | 0% → 100% | 112d → none |
